# Projeto de Migração Tasy Evolution - Botelho

Schedule from MS Project, 2025-08-25 to 2026-02-06, A marks actual dates.

## Calendars

- Padrão: Mon-Fri 09:00-12:00, 13:00-18:00; Sat-Sun off.

## Resources

| Resource |
| --- |
| Cliente |
| Consultor Philips |
| Cliente |

## Schedule

| ID | WBS | Task | Duration | Start | Finish | Predecessors | Complete | Baseline start | Baseline finish | Baseline duration | Constraint | Resources | Work | Actual work |
| --- | --- | --- | --- | --- | --- | --- | --- | --- | --- | --- | --- | --- | --- | --- |
| 1 | 1 | **Cronograma - Projeto de Migração Tasy Evolution - Oftalmoclinica Botelho** | 120d | 2025-08-25 09:00 A | 2026-02-06 18:00 A |  | 100% | 2023-03-20 09:00 | 2024-03-13 15:00 | 2061h |  |  | 800h | 800h |
| 2 | 1.1 | **Cronograma - Fase 1 - TI** | 5d | 2025-08-25 09:00 A | 2025-08-29 18:00 A |  | 100% | 2023-03-20 09:00 | 2024-03-13 15:00 | 2061h |  |  | 40h | 40h |
| 3 | 1.1.1 | **Validação dos Perfis / Ajustes de Parametrição / Treinamento / Virada - TI** | 5d | 2025-08-25 09:00 A | 2025-08-29 18:00 A |  | 100% | 2023-03-20 09:00 | 2023-03-20 18:00 | 1d |  |  | 40h | 40h |
| 4 | 1.1.1.1 | **Validação dos Perfis e Funções** | 0.5d | 2025-08-25 09:00 A | 2025-08-25 14:00 A |  | 100% | 2023-03-20 09:00 | 2023-03-20 18:00 | 1d |  |  | 4h | 4h |
| 5 | 1.1.1.1.1 | Validação e saneamento dos perfis utilizados no setor | 4h | 2025-08-25 09:00 A | 2025-08-25 14:00 A |  | 100% | 2023-03-20 09:00 | 2023-03-20 18:00 | 1d? |  | Consultor Philips | 4h | 4h |
| 6 | 1.1.1.2 | **Ajustes de Parametriação** | 1.5d | 2025-08-25 14:00 A | 2025-08-26 18:00 A |  | 100% | 2023-03-20 09:00 | 2023-03-20 18:00 | 1d |  |  | 12h | 12h |
| 7 | 1.1.1.2.1 | Revisão dos parâmetros e regras | 12h | 2025-08-25 14:00 A | 2025-08-26 18:00 A | 5 | 100% | 2023-03-20 09:00 | 2023-03-20 18:00 | 8h? |  | Consultor Philips | 12h | 12h |
| 8 | 1.1.1.3 | **Treinamento** | 3d | 2025-08-27 09:00 A | 2025-08-29 18:00 A |  | 100% | 2023-03-20 09:00 | 2023-03-20 18:00 | 1d |  |  | 24h | 24h |
| 9 | 1.1.1.3.1 | Treinamentos Iniciais do HTML5 | 24h | 2025-08-27 09:00 A | 2025-08-29 18:00 A | 7 | 100% | 2023-03-20 09:00 | 2023-03-20 18:00 | 1d |  | Consultor Philips | 24h | 24h |
| 10 | 1.2 | **Cronograma - Fase 2 - Recepção** | 20d | 2025-09-15 09:00 A | 2025-10-10 18:00 A |  | 100% | 2023-03-20 09:00 | 2024-03-13 15:00 | 2061h |  |  | 160h | 160h |
| 11 | 1.2.1 | **Validação dos Perfis / Ajustes de Parametrição / Treinamento / Virada - Recepção Consultas** | 5d | 2025-09-15 09:00 A | 2025-09-19 18:00 A |  | 100% | 2023-03-20 09:00 | 2023-03-20 18:00 | 1d |  |  | 40h | 40h |
| 12 | 1.2.1.1 | **Validação dos Perfis e Funções** | 0.5d | 2025-09-15 09:00 A | 2025-09-15 14:00 A |  | 100% | 2023-03-20 09:00 | 2023-03-20 18:00 | 1d |  |  | 4h | 4h |
| 13 | 1.2.1.1.1 | Validação e saneamento dos perfis utilizados no setor | 4h | 2025-09-15 09:00 A | 2025-09-15 14:00 A |  | 100% | 2023-03-20 09:00 | 2023-03-20 18:00 | 1d? | start no earlier than 2025-09-15 09:00 | Consultor Philips | 4h | 4h |
| 14 | 1.2.1.2 | **Ajustes de Parametriação** | 1.5d | 2025-09-15 14:00 A | 2025-09-16 18:00 A |  | 100% | 2023-03-20 09:00 | 2023-03-20 18:00 | 1d |  |  | 12h | 12h |
| 15 | 1.2.1.2.1 | Revisão dos parâmetros e regras | 12h | 2025-09-15 14:00 A | 2025-09-16 18:00 A | 13 | 100% | 2023-03-20 09:00 | 2023-03-20 18:00 | 8h? |  | Consultor Philips | 12h | 12h |
| 16 | 1.2.1.3 | **Treinamento** | 1d | 2025-09-17 09:00 A | 2025-09-17 18:00 A |  | 100% | 2023-03-20 09:00 | 2023-03-20 18:00 | 1d |  |  | 8h | 8h |
| 17 | 1.2.1.3.1 | Treinamento dos colaboradores | 8h | 2025-09-17 09:00 A | 2025-09-17 18:00 A | 15 | 100% | 2023-03-20 09:00 | 2023-03-20 18:00 | 1d |  | Consultor Philips | 8h | 8h |
| 18 | 1.2.1.4 | **Virada** | 2d | 2025-09-18 09:00 A | 2025-09-19 18:00 A |  | 100% | 2023-03-20 09:00 | 2023-03-20 18:00 | 1d |  |  | 16h | 16h |
| 19 | 1.2.1.4.1 | Processo de virada e acompanhamento | 16h | 2025-09-18 09:00 A | 2025-09-19 18:00 A | 17 | 100% | 2023-03-20 09:00 | 2023-03-20 18:00 | 1d |  | Consultor Philips | 16h | 16h |
| 20 | 1.2.2 | **Validação dos Perfis / Ajustes de Parametrição / Treinamento / Virada - Caixa/Tesouraria** | 5d | 2025-09-22 09:00 A | 2025-09-26 18:00 A |  | 100% | 2023-03-20 09:00 | 2023-03-20 18:00 | 1d |  |  | 40h | 40h |
| 21 | 1.2.2.1 | **Validação dos Perfis e Funções** | 0.5d | 2025-09-22 09:00 A | 2025-09-22 14:00 A |  | 100% | 2023-03-20 09:00 | 2023-03-20 18:00 | 1d |  |  | 4h | 4h |
| 22 | 1.2.2.1.1 | Validação e saneamento dos perfis utilizados no setor | 4h | 2025-09-22 09:00 A | 2025-09-22 14:00 A | 19 | 100% | 2023-03-20 09:00 | 2023-03-20 18:00 | 1d? |  | Cliente | 4h | 4h |
| 23 | 1.2.2.2 | **Ajustes de Parametriação** | 1.5d | 2025-09-22 14:00 A | 2025-09-23 18:00 A |  | 100% | 2023-03-20 09:00 | 2023-03-20 18:00 | 1d |  |  | 12h | 12h |
| 24 | 1.2.2.2.1 | Revisão dos parâmetros e regras | 12h | 2025-09-22 14:00 A | 2025-09-23 18:00 A | 22 | 100% | 2023-03-20 09:00 | 2023-03-20 18:00 | 8h? |  | Cliente | 12h | 12h |

| ID | WBS | Task | Duration | Start | Finish | Predecessors | Complete | Baseline start | Baseline finish | Baseline duration | Resources | Work | Actual work |
| --- | --- | --- | --- | --- | --- | --- | --- | --- | --- | --- | --- | --- | --- |
| 25 | 1.2.2.3 | **Treinamento** | 1d | 2025-09-24 09:00 A | 2025-09-24 18:00 A |  | 100% | 2023-03-20 09:00 | 2023-03-20 18:00 | 1d |  | 8h | 8h |
| 26 | 1.2.2.3.1 | Treinamento dos colaboradores | 8h | 2025-09-24 09:00 A | 2025-09-24 18:00 A | 24 | 100% | 2023-03-20 09:00 | 2023-03-20 18:00 | 1d | Cliente | 8h | 8h |
| 27 | 1.2.2.4 | **Virada** | 2d | 2025-09-25 09:00 A | 2025-09-26 18:00 A |  | 100% | 2023-03-20 09:00 | 2023-03-20 18:00 | 1d |  | 16h | 16h |
| 28 | 1.2.2.4.1 | Processo de virada e acompanhamento | 16h | 2025-09-25 09:00 A | 2025-09-26 18:00 A | 26 | 100% | 2023-03-20 09:00 | 2023-03-20 18:00 | 1d | Cliente | 16h | 16h |
| 29 | 1.2.3 | **Validação dos Perfis / Ajustes de Parametrição / Treinamento / Virada - Cadastros** | 5d | 2025-09-29 09:00 A | 2025-10-03 18:00 A |  | 100% | 2023-03-20 09:00 | 2023-03-20 18:00 | 1d |  | 40h | 40h |
| 30 | 1.2.3.1 | **Validação dos Perfis e Funções** | 0.5d | 2025-09-29 09:00 A | 2025-09-29 14:00 A |  | 100% | 2023-03-20 09:00 | 2023-03-20 18:00 | 1d |  | 4h | 4h |
| 31 | 1.2.3.1.1 | Validação e saneamento dos perfis utilizados no setor | 4h | 2025-09-29 09:00 A | 2025-09-29 14:00 A | 28 | 100% | 2023-03-20 09:00 | 2023-03-20 18:00 | 1d? | Cliente | 4h | 4h |
| 32 | 1.2.3.2 | **Ajustes de Parametriação** | 1.5d | 2025-09-29 14:00 A | 2025-09-30 18:00 A |  | 100% | 2023-03-20 09:00 | 2023-03-20 18:00 | 1d |  | 12h | 12h |
| 33 | 1.2.3.2.1 | Revisão dos parâmetros e regras | 12h | 2025-09-29 14:00 A | 2025-09-30 18:00 A | 31 | 100% | 2023-03-20 09:00 | 2023-03-20 18:00 | 8h? | Cliente | 12h | 12h |
| 34 | 1.2.3.3 | **Treinamento** | 1d | 2025-10-01 09:00 A | 2025-10-01 18:00 A |  | 100% | 2023-03-20 09:00 | 2023-03-20 18:00 | 1d |  | 8h | 8h |
| 35 | 1.2.3.3.1 | Treinamento dos colaboradores | 8h | 2025-10-01 09:00 A | 2025-10-01 18:00 A | 33 | 100% | 2023-03-20 09:00 | 2023-03-20 18:00 | 1d | Cliente | 8h | 8h |
| 36 | 1.2.3.4 | **Virada** | 2d | 2025-10-02 09:00 A | 2025-10-03 18:00 A |  | 100% | 2023-03-20 09:00 | 2023-03-20 18:00 | 1d |  | 16h | 16h |
| 37 | 1.2.3.4.1 | Processo de virada e acompanhamento | 16h | 2025-10-02 09:00 A | 2025-10-03 18:00 A | 35 | 100% | 2023-03-20 09:00 | 2023-03-20 18:00 | 1d | Cliente | 16h | 16h |
| 38 | 1.2.4 | **Validação dos Perfis / Ajustes de Parametrição / Treinamento / Virada - Call Center** | 5d | 2025-10-06 09:00 A | 2025-10-10 18:00 A |  | 100% | 2023-03-20 09:00 | 2023-03-20 18:00 | 1d |  | 40h | 40h |
| 39 | 1.2.4.1 | **Validação dos Perfis e Funções** | 0.5d | 2025-10-06 09:00 A | 2025-10-06 14:00 A |  | 100% | 2023-03-20 09:00 | 2023-03-20 18:00 | 1d |  | 4h | 4h |
| 40 | 1.2.4.1.1 | Validação e saneamento dos perfis utilizados no setor | 4h | 2025-10-06 09:00 A | 2025-10-06 14:00 A | 37 | 100% | 2023-03-20 09:00 | 2023-03-20 18:00 | 1d? | Cliente | 4h | 4h |
| 41 | 1.2.4.2 | **Ajustes de Parametriação** | 1.5d | 2025-10-06 14:00 A | 2025-10-07 18:00 A |  | 100% | 2023-03-20 09:00 | 2023-03-20 18:00 | 1d |  | 12h | 12h |
| 42 | 1.2.4.2.1 | Revisão dos parâmetros e regras | 12h | 2025-10-06 14:00 A | 2025-10-07 18:00 A | 40 | 100% | 2023-03-20 09:00 | 2023-03-20 18:00 | 8h? | Cliente | 12h | 12h |
| 43 | 1.2.4.3 | **Treinamento** | 1d | 2025-10-08 09:00 A | 2025-10-08 18:00 A |  | 100% | 2023-03-20 09:00 | 2023-03-20 18:00 | 1d |  | 8h | 8h |
| 44 | 1.2.4.3.1 | Treinamento dos colaboradores | 8h | 2025-10-08 09:00 A | 2025-10-08 18:00 A | 42 | 100% | 2023-03-20 09:00 | 2023-03-20 18:00 | 1d | Cliente | 8h | 8h |
| 45 | 1.2.4.4 | **Virada** | 2d | 2025-10-09 09:00 A | 2025-10-10 18:00 A |  | 100% | 2023-03-20 09:00 | 2023-03-20 18:00 | 1d |  | 16h | 16h |
| 46 | 1.2.4.4.1 | Processo de virada e acompanhamento | 16h | 2025-10-09 09:00 A | 2025-10-10 18:00 A | 44 | 100% | 2023-03-20 09:00 | 2023-03-20 18:00 | 1d | Cliente | 16h | 16h |
| 47 | 1.3 | **Cronograma - Fase 3 - Assistencial (Consultoria)** | 30d | 2025-11-03 09:00 A | 2025-12-12 18:00 A |  | 100% | 2023-03-20 09:00 | 2024-03-13 15:00 | 2061h |  | 400h | 400h |
| 48 | 1.3.1 | **Validação dos Perfis / Ajustes de Parametrição / Treinamento / Virada - Enfermagem** | 5d | 2025-11-03 09:00 A | 2025-11-07 18:00 A |  | 100% | 2023-03-20 09:00 | 2023-03-20 18:00 | 1d |  | 40h | 40h |
| 49 | 1.3.1.1 | **Validação dos Perfis e Funções** | 1d | 2025-11-03 09:00 A | 2025-11-03 18:00 A |  | 100% | 2023-03-20 09:00 | 2023-03-20 18:00 | 1d |  | 8h | 8h |
| 50 | 1.3.1.1.1 | Validação e saneamento dos perfis utilizados no setor | 8h | 2025-11-03 09:00 A | 2025-11-03 18:00 A | 46 | 100% | 2023-03-20 09:00 | 2023-03-20 18:00 | 1d? | Consultor Philips | 8h | 8h |

| ID | WBS | Task | Duration | Start | Finish | Predecessors | Complete | Baseline start | Baseline finish | Baseline duration | Resources | Work | Actual work |
| --- | --- | --- | --- | --- | --- | --- | --- | --- | --- | --- | --- | --- | --- |
| 51 | 1.3.1.2 | **Ajustes de Parametriação** | 1d | 2025-11-04 09:00 A | 2025-11-04 18:00 A |  | 100% | 2023-03-20 09:00 | 2023-03-20 18:00 | 1d |  | 8h | 8h |
| 52 | 1.3.1.2.1 | Revisão dos parâmetros e regras | 8h | 2025-11-04 09:00 A | 2025-11-04 18:00 A | 50 | 100% | 2023-03-20 09:00 | 2023-03-20 18:00 | 8h? | Consultor Philips | 8h | 8h |
| 53 | 1.3.1.3 | **Treinamento** | 1d | 2025-11-05 09:00 A | 2025-11-05 18:00 A |  | 100% | 2023-03-20 09:00 | 2023-03-20 18:00 | 1d |  | 8h | 8h |
| 54 | 1.3.1.3.1 | Treinamento dos colaboradores | 4h | 2025-11-05 09:00 A | 2025-11-05 14:00 A | 52 | 100% | 2023-03-20 09:00 | 2023-03-20 18:00 | 1d | Consultor Philips | 4h | 4h |
| 55 | 1.3.1.3.2 | Prontuário Eletronico do Paciente | 4h | 2025-11-05 14:00 A | 2025-11-05 18:00 A | 54 | 100% |  |  |  | Consultor Philips | 4h | 4h |
| 56 | 1.3.1.4 | **Virada** | 2d | 2025-11-06 09:00 A | 2025-11-07 18:00 A |  | 100% | 2023-03-20 09:00 | 2023-03-20 18:00 | 1d |  | 16h | 16h |
| 57 | 1.3.1.4.1 | Processo de virada e acompanhamento - Enfermagem | 16h | 2025-11-06 09:00 A | 2025-11-07 18:00 A | 55 | 100% | 2023-03-20 09:00 | 2023-03-20 18:00 | 1d | Consultor Philips | 16h | 16h |
| 58 | 1.3.2 | **Validação dos Perfis / Ajustes de Parametrição / Treinamento / Virada - Pré Consultas** | 5d | 2025-11-10 09:00 A | 2025-11-14 18:00 A |  | 100% | 2023-03-20 09:00 | 2023-03-20 18:00 | 1d |  | 40h | 40h |
| 59 | 1.3.2.1 | **Validação dos Perfis e Funções** | 0.5d | 2025-11-10 09:00 A | 2025-11-10 14:00 A |  | 100% | 2023-03-20 09:00 | 2023-03-20 18:00 | 1d |  | 4h | 4h |
| 60 | 1.3.2.1.1 | Validação e saneamento dos perfis utilizados no setor | 4h | 2025-11-10 09:00 A | 2025-11-10 14:00 A | 57 | 100% | 2023-03-20 09:00 | 2023-03-20 18:00 | 1d? | Consultor Philips | 4h | 4h |
| 61 | 1.3.2.2 | **Ajustes de Parametriação** | 1.5d | 2025-11-10 14:00 A | 2025-11-11 18:00 A |  | 100% | 2023-03-20 09:00 | 2023-03-20 18:00 | 1d |  | 12h | 12h |
| 62 | 1.3.2.2.1 | Revisão dos parâmetros e regras | 12h | 2025-11-10 14:00 A | 2025-11-11 18:00 A | 60 | 100% | 2023-03-20 09:00 | 2023-03-20 18:00 | 8h? | Consultor Philips | 12h | 12h |
| 63 | 1.3.2.3 | **Treinamento** | 1d | 2025-11-12 09:00 A | 2025-11-12 18:00 A |  | 100% | 2023-03-20 09:00 | 2023-03-20 18:00 | 1d |  | 8h | 8h |
| 64 | 1.3.2.3.1 | Treinamento dos colaboradores | 8h | 2025-11-12 09:00 A | 2025-11-12 18:00 A | 62 | 100% | 2023-03-20 09:00 | 2023-03-20 18:00 | 1d | Consultor Philips | 8h | 8h |
| 65 | 1.3.2.4 | **Virada** | 2d | 2025-11-13 09:00 A | 2025-11-14 18:00 A |  | 100% | 2023-03-20 09:00 | 2023-03-20 18:00 | 1d |  | 16h | 16h |
| 66 | 1.3.2.4.1 | Processo de virada e acompanhamento | 16h | 2025-11-13 09:00 A | 2025-11-14 18:00 A | 64 | 100% | 2023-03-20 09:00 | 2023-03-20 18:00 | 1d | Consultor Philips | 16h | 16h |
| 67 | 1.3.3 | **Validação dos Perfis / Ajustes de Parametrição / Treinamento / Virada - Consultório Médico** | 5d | 2025-11-17 09:00 A | 2025-11-21 18:00 A |  | 100% | 2023-03-20 09:00 | 2023-03-20 18:00 | 1d |  | 40h | 40h |
| 68 | 1.3.3.1 | **Validação dos Perfis e Funções** | 0.5d | 2025-11-17 09:00 A | 2025-11-17 14:00 A |  | 100% | 2023-03-20 09:00 | 2023-03-20 18:00 | 1d |  | 4h | 4h |
| 69 | 1.3.3.1.1 | Validação e saneamento dos perfis utilizados no setor | 4h | 2025-11-17 09:00 A | 2025-11-17 14:00 A | 66 | 100% | 2023-03-20 09:00 | 2023-03-20 18:00 | 1d? | Consultor Philips | 4h | 4h |
| 70 | 1.3.3.2 | **Ajustes de Parametriação** | 1.5d | 2025-11-17 14:00 A | 2025-11-18 18:00 A |  | 100% | 2023-03-20 09:00 | 2023-03-20 18:00 | 1d |  | 12h | 12h |
| 71 | 1.3.3.2.1 | Revisão dos parâmetros e regras | 12h | 2025-11-17 14:00 A | 2025-11-18 18:00 A | 69 | 100% | 2023-03-20 09:00 | 2023-03-20 18:00 | 8h? | Consultor Philips | 12h | 12h |
| 72 | 1.3.3.3 | **Treinamento** | 1d | 2025-11-19 09:00 A | 2025-11-19 18:00 A |  | 100% | 2023-03-20 09:00 | 2023-03-20 18:00 | 1d |  | 8h | 8h |
| 73 | 1.3.3.3.1 | Treinamento dos colaboradores | 4h | 2025-11-19 09:00 A | 2025-11-19 14:00 A | 71 | 100% | 2023-03-20 09:00 | 2023-03-20 18:00 | 1d | Consultor Philips | 4h | 4h |
| 74 | 1.3.3.3.2 | Prontuário Eletronico do Paciente | 4h | 2025-11-19 14:00 A | 2025-11-19 18:00 A | 73 | 100% |  |  |  | Consultor Philips | 4h | 4h |

| ID | WBS | Task | Duration | Start | Finish | Predecessors | Complete | Baseline start | Baseline finish | Baseline duration | Resources | Work | Actual work |
| --- | --- | --- | --- | --- | --- | --- | --- | --- | --- | --- | --- | --- | --- |
| 75 | 1.3.3.4 | **Virada** | 2d | 2025-11-20 09:00 A | 2025-11-21 18:00 A |  | 100% | 2023-03-20 09:00 | 2023-03-20 18:00 | 1d |  | 16h | 16h |
| 76 | 1.3.3.4.1 | Processo de virada e acompanhamento | 16h | 2025-11-20 09:00 A | 2025-11-21 18:00 A | 74 | 100% | 2023-03-20 09:00 | 2023-03-20 18:00 | 1d | Consultor Philips | 16h | 16h |
| 77 | 1.3.4 | **Validação dos Perfis / Ajustes de Parametrição / Treinamento / Virada - Orientação Cirúrgica** | 5d | 2025-11-03 09:00 A | 2025-11-07 18:00 A |  | 100% | 2023-03-20 09:00 | 2023-03-20 18:00 | 1d |  | 40h | 40h |
| 78 | 1.3.4.1 | **Validação dos Perfis e Funções** | 0.5d | 2025-11-03 09:00 A | 2025-11-03 14:00 A |  | 100% | 2023-03-20 09:00 | 2023-03-20 18:00 | 1d |  | 4h | 4h |
| 79 | 1.3.4.1.1 | Validação e saneamento dos perfis utilizados no setor | 4h | 2025-11-03 09:00 A | 2025-11-03 14:00 A | 76 | 100% | 2023-03-20 09:00 | 2023-03-20 18:00 | 1d? | Cliente | 4h | 4h |
| 80 | 1.3.4.2 | **Ajustes de Parametriação** | 1.5d | 2025-11-03 14:00 A | 2025-11-04 18:00 A |  | 100% | 2023-03-20 09:00 | 2023-03-20 18:00 | 1d |  | 12h | 12h |
| 81 | 1.3.4.2.1 | Revisão dos parâmetros e regras | 12h | 2025-11-03 14:00 A | 2025-11-04 18:00 A | 79 | 100% | 2023-03-20 09:00 | 2023-03-20 18:00 | 8h? | Cliente | 12h | 12h |
| 82 | 1.3.4.3 | **Treinamento** | 1d | 2025-11-05 09:00 A | 2025-11-05 18:00 A |  | 100% | 2023-03-20 09:00 | 2023-03-20 18:00 | 1d |  | 8h | 8h |
| 83 | 1.3.4.3.1 | Treinamento dos colaboradores | 8h | 2025-11-05 09:00 A | 2025-11-05 18:00 A | 81 | 100% | 2023-03-20 09:00 | 2023-03-20 18:00 | 1d | Cliente | 8h | 8h |
| 84 | 1.3.4.4 | **Virada** | 2d | 2025-11-06 09:00 A | 2025-11-07 18:00 A |  | 100% | 2023-03-20 09:00 | 2023-03-20 18:00 | 1d |  | 16h | 16h |
| 85 | 1.3.4.4.1 | Processo de virada e acompanhamento | 16h | 2025-11-06 09:00 A | 2025-11-07 18:00 A | 83 | 100% | 2023-03-20 09:00 | 2023-03-20 18:00 | 1d | Cliente | 16h | 16h |
| 86 | 1.3.5 | **Validação dos Perfis / Ajustes de Parametrição / Treinamento / Virada - Recepção Exames** | 5d | 2025-11-10 09:00 A | 2025-11-14 18:00 A |  | 100% | 2023-03-20 09:00 | 2023-03-20 18:00 | 1d |  | 40h | 40h |
| 87 | 1.3.5.1 | **Validação dos Perfis e Funções** | 0.5d | 2025-11-10 09:00 A | 2025-11-10 14:00 A |  | 100% | 2023-03-20 09:00 | 2023-03-20 18:00 | 1d |  | 4h | 4h |
| 88 | 1.3.5.1.1 | Validação e saneamento dos perfis utilizados no setor | 4h | 2025-11-10 09:00 A | 2025-11-10 14:00 A | 85 | 100% | 2023-03-20 09:00 | 2023-03-20 18:00 | 1d? | Cliente | 4h | 4h |
| 89 | 1.3.5.2 | **Ajustes de Parametriação** | 1d | 2025-11-10 14:00 A | 2025-11-11 14:00 A |  | 100% | 2023-03-20 09:00 | 2023-03-20 18:00 | 1d |  | 8h | 8h |
| 90 | 1.3.5.2.1 | Revisão dos parâmetros e regras | 8h | 2025-11-10 14:00 A | 2025-11-11 14:00 A | 88 | 100% | 2023-03-20 09:00 | 2023-03-20 18:00 | 8h? | Cliente | 8h | 8h |
| 91 | 1.3.5.3 | **Treinamento** | 0.5d | 2025-11-11 14:00 A | 2025-11-11 18:00 A |  | 100% | 2023-03-20 09:00 | 2023-03-20 18:00 | 1d |  | 4h | 4h |
| 92 | 1.3.5.3.1 | Treinamento dos colaboradores | 4h | 2025-11-11 14:00 A | 2025-11-11 18:00 A | 90 | 100% | 2023-03-20 09:00 | 2023-03-20 18:00 | 1d | Cliente | 4h | 4h |
| 93 | 1.3.5.4 | **Virada** | 3d | 2025-11-12 09:00 A | 2025-11-14 18:00 A |  | 100% | 2023-03-20 09:00 | 2023-03-20 18:00 | 1d |  | 24h | 24h |
| 94 | 1.3.5.4.1 | Processo de virada e acompanhamento | 24h | 2025-11-12 09:00 A | 2025-11-14 18:00 A | 92 | 100% | 2023-03-20 09:00 | 2023-03-20 18:00 | 1d | Cliente | 24h | 24h |
| 95 | 1.3.6 | **Validação dos Perfis / Ajustes de Parametrição / Treinamento / Virada - Exames** | 5d | 2025-11-17 09:00 A | 2025-11-21 18:00 A |  | 100% | 2023-03-20 09:00 | 2023-03-20 18:00 | 1d |  | 40h | 40h |
| 96 | 1.3.6.1 | **Validação dos Perfis e Funções** | 0.5d | 2025-11-17 09:00 A | 2025-11-17 14:00 A |  | 100% | 2023-03-20 09:00 | 2023-03-20 18:00 | 1d |  | 4h | 4h |
| 97 | 1.3.6.1.1 | Validação e saneamento dos perfis utilizados no setor | 4h | 2025-11-17 09:00 A | 2025-11-17 14:00 A | 94 | 100% | 2023-03-20 09:00 | 2023-03-20 18:00 | 1d? | Cliente | 4h | 4h |
| 98 | 1.3.6.2 | **Ajustes de Parametriação** | 1.5d | 2025-11-17 14:00 A | 2025-11-18 18:00 A |  | 100% | 2023-03-20 09:00 | 2023-03-20 18:00 | 1d |  | 12h | 12h |
| 99 | 1.3.6.2.1 | Revisão dos parâmetros e regras | 12h | 2025-11-17 14:00 A | 2025-11-18 18:00 A | 97 | 100% | 2023-03-20 09:00 | 2023-03-20 18:00 | 8h? | Cliente | 12h | 12h |

| ID | WBS | Task | Duration | Start | Finish | Predecessors | Complete | Baseline start | Baseline finish | Baseline duration | Resources | Work | Actual work |
| --- | --- | --- | --- | --- | --- | --- | --- | --- | --- | --- | --- | --- | --- |
| 100 | 1.3.6.3 | **Treinamento** | 1d | 2025-11-19 09:00 A | 2025-11-19 18:00 A |  | 100% | 2023-03-20 09:00 | 2023-03-20 18:00 | 1d |  | 8h | 8h |
| 101 | 1.3.6.3.1 | Treinamento dos colaboradores | 8h | 2025-11-19 09:00 A | 2025-11-19 18:00 A | 99 | 100% | 2023-03-20 09:00 | 2023-03-20 18:00 | 1d | Cliente | 8h | 8h |
| 102 | 1.3.6.4 | **Virada** | 2d | 2025-11-20 09:00 A | 2025-11-21 18:00 A |  | 100% | 2023-03-20 09:00 | 2023-03-20 18:00 | 1d |  | 16h | 16h |
| 103 | 1.3.6.4.1 | Processo de virada e acompanhamento | 16h | 2025-11-20 09:00 A | 2025-11-21 18:00 A | 101 | 100% | 2023-03-20 09:00 | 2023-03-20 18:00 | 1d | Cliente | 16h | 16h |
| 104 | 1.3.7 | **Validação dos Perfis / Ajustes de Parametrição / Treinamento / Virada - Farmácia** | 5d | 2025-11-24 09:00 A | 2025-11-28 18:00 A |  | 100% | 2023-03-20 09:00 | 2023-03-20 18:00 | 1d |  | 40h | 40h |
| 105 | 1.3.7.1 | **Validação dos Perfis e Funções** | 0.5d | 2025-11-24 09:00 A | 2025-11-24 14:00 A |  | 100% | 2023-03-20 09:00 | 2023-03-20 18:00 | 1d |  | 4h | 4h |
| 106 | 1.3.7.1.1 | Validação e saneamento dos perfis utilizados no setor | 4h | 2025-11-24 09:00 A | 2025-11-24 14:00 A | 103 | 100% | 2023-03-20 09:00 | 2023-03-20 18:00 | 1d? | Cliente | 4h | 4h |
| 107 | 1.3.7.2 | **Ajustes de Parametriação** | 1.5d | 2025-11-24 14:00 A | 2025-11-25 18:00 A |  | 100% | 2023-03-20 09:00 | 2023-03-20 18:00 | 1d |  | 12h | 12h |
| 108 | 1.3.7.2.1 | Revisão dos parâmetros e regras | 12h | 2025-11-24 14:00 A | 2025-11-25 18:00 A | 106 | 100% | 2023-03-20 09:00 | 2023-03-20 18:00 | 8h? | Cliente | 12h | 12h |
| 109 | 1.3.7.3 | **Treinamento** | 1d | 2025-11-26 09:00 A | 2025-11-26 18:00 A |  | 100% | 2023-03-20 09:00 | 2023-03-20 18:00 | 1d |  | 8h | 8h |
| 110 | 1.3.7.3.1 | Treinamento dos colaboradores no HTML5 | 8h | 2025-11-26 09:00 A | 2025-11-26 18:00 A | 108 | 100% | 2023-03-20 09:00 | 2023-03-20 18:00 | 1d | Cliente | 8h | 8h |
| 111 | 1.3.7.4 | **Virada** | 2d | 2025-11-27 09:00 A | 2025-11-28 18:00 A |  | 100% | 2023-03-20 09:00 | 2023-03-20 18:00 | 1d |  | 16h | 16h |
| 112 | 1.3.7.4.1 | Processo de virada e acompanhamento - Enfermagem | 16h | 2025-11-27 09:00 A | 2025-11-28 18:00 A | 110 | 100% | 2023-03-20 09:00 | 2023-03-20 18:00 | 1d | Cliente | 16h | 16h |
| 113 | 1.3.8 | **Validação dos Perfis / Ajustes de Parametrição / Treinamento / Virada - Almoxarifado/compas** | 5d | 2025-12-01 09:00 A | 2025-12-05 18:00 A |  | 100% | 2023-03-20 09:00 | 2023-03-20 18:00 | 1d |  | 40h | 40h |
| 114 | 1.3.8.1 | **Validação dos Perfis e Funções** | 0.5d | 2025-12-01 09:00 A | 2025-12-01 14:00 A |  | 100% | 2023-03-20 09:00 | 2023-03-20 18:00 | 1d |  | 4h | 4h |
| 115 | 1.3.8.1.1 | Validação e saneamento dos perfis utilizados no setor | 4h | 2025-12-01 09:00 A | 2025-12-01 14:00 A | 112 | 100% | 2023-03-20 09:00 | 2023-03-20 18:00 | 1d? | Cliente | 4h | 4h |
| 116 | 1.3.8.2 | **Ajustes de Parametriação** | 1d | 2025-12-01 14:00 A | 2025-12-02 14:00 A |  | 100% | 2023-03-20 09:00 | 2023-03-20 18:00 | 1d |  | 8h | 8h |
| 117 | 1.3.8.2.1 | Revisão dos parâmetros e regras | 8h | 2025-12-01 14:00 A | 2025-12-02 14:00 A | 115 | 100% | 2023-03-20 09:00 | 2023-03-20 18:00 | 8h? | Cliente | 8h | 8h |
| 118 | 1.3.8.3 | **Treinamento** | 1.5d | 2025-12-02 14:00 A | 2025-12-03 18:00 A |  | 100% | 2023-03-20 09:00 | 2023-03-20 18:00 | 1d |  | 12h | 12h |
| 119 | 1.3.8.3.1 | Treinamento dos colaboradores | 12h | 2025-12-02 14:00 A | 2025-12-03 18:00 A | 117 | 100% | 2023-03-20 09:00 | 2023-03-20 18:00 | 1d | Cliente | 12h | 12h |
| 120 | 1.3.8.4 | **Virada** | 2d | 2025-12-04 09:00 A | 2025-12-05 18:00 A |  | 100% | 2023-03-20 09:00 | 2023-03-20 18:00 | 1d |  | 16h | 16h |
| 121 | 1.3.8.4.1 | Processo de virada e acompanhamento | 16h | 2025-12-04 09:00 A | 2025-12-05 18:00 A | 119 | 100% | 2023-03-20 09:00 | 2023-03-20 18:00 | 1d | Cliente | 16h | 16h |
| 122 | 1.3.9 | **Validação dos Perfis / Ajustes de Parametrição / Treinamento / Virada - Manutenção / Eng Clínica** | 5d | 2025-12-08 09:00 A | 2025-12-12 18:00 A |  | 100% | 2023-03-20 09:00 | 2023-03-20 18:00 | 1d |  | 40h | 40h |
| 123 | 1.3.9.1 | **Validação dos Perfis e Funções** | 0.5d | 2025-12-08 09:00 A | 2025-12-08 14:00 A |  | 100% | 2023-03-20 09:00 | 2023-03-20 18:00 | 1d |  | 4h | 4h |
| 124 | 1.3.9.1.1 | Validação e saneamento dos perfis utilizados no setor | 4h | 2025-12-08 09:00 A | 2025-12-08 14:00 A | 121 | 100% | 2023-03-20 09:00 | 2023-03-20 18:00 | 1d? | Cliente | 4h | 4h |

| ID | WBS | Task | Duration | Start | Finish | Predecessors | Complete | Baseline start | Baseline finish | Baseline duration | Constraint | Resources | Work | Actual work |
| --- | --- | --- | --- | --- | --- | --- | --- | --- | --- | --- | --- | --- | --- | --- |
| 125 | 1.3.9.2 | **Ajustes de Parametriação** | 1.5d | 2025-12-08 14:00 A | 2025-12-09 18:00 A |  | 100% | 2023-03-20 09:00 | 2023-03-20 18:00 | 1d |  |  | 12h | 12h |
| 126 | 1.3.9.2.1 | Revisão dos parâmetros e regras | 12h | 2025-12-08 14:00 A | 2025-12-09 18:00 A | 124 | 100% | 2023-03-20 09:00 | 2023-03-20 18:00 | 8h? |  | Cliente | 12h | 12h |
| 127 | 1.3.9.3 | **Treinamento** | 1d | 2025-12-10 09:00 A | 2025-12-10 18:00 A |  | 100% | 2023-03-20 09:00 | 2023-03-20 18:00 | 1d |  |  | 8h | 8h |
| 128 | 1.3.9.3.1 | Treinamento dos colaboradores | 8h | 2025-12-10 09:00 A | 2025-12-10 18:00 A | 126 | 100% |  |  |  |  | Cliente | 8h | 8h |
| 129 | 1.3.9.4 | **Virada** | 2d | 2025-12-11 09:00 A | 2025-12-12 18:00 A |  | 100% | 2023-03-20 09:00 | 2023-03-20 18:00 | 1d |  |  | 16h | 16h |
| 130 | 1.3.9.4.1 | Processo de virada e acompanhamento | 16h | 2025-12-11 09:00 A | 2025-12-12 18:00 A | 128 | 100% | 2023-03-20 09:00 | 2023-03-20 18:00 | 1d |  | Cliente | 16h | 16h |
| 131 | 1.3.10 | **Validação dos Perfis / Ajustes de Parametrição / Treinamento / Virada - Centro Cirúrgico** | 5d | 2025-12-08 09:00 A | 2025-12-12 18:00 A |  | 100% | 2023-03-20 09:00 | 2023-03-20 18:00 | 1d |  |  | 40h | 40h |
| 132 | 1.3.10.1 | **Validação dos Perfis e Funções** | 0.5d | 2025-12-08 09:00 A | 2025-12-08 14:00 A |  | 100% | 2023-03-20 09:00 | 2023-03-20 18:00 | 1d |  |  | 4h | 4h |
| 133 | 1.3.10.1.1 | Validação e saneamento dos perfis utilizados no setor | 4h | 2025-12-08 09:00 A | 2025-12-08 14:00 A | 121 | 100% | 2023-03-20 09:00 | 2023-03-20 18:00 | 1d? |  | Consultor Philips | 4h | 4h |
| 134 | 1.3.10.2 | **Ajustes de Parametriação** | 1d | 2025-12-08 14:00 A | 2025-12-09 14:00 A |  | 100% | 2023-03-20 09:00 | 2023-03-20 18:00 | 1d |  |  | 8h | 8h |
| 135 | 1.3.10.2.1 | Revisão dos parâmetros e regras | 8h | 2025-12-08 14:00 A | 2025-12-09 14:00 A | 133 | 100% | 2023-03-20 09:00 | 2023-03-20 18:00 | 8h? |  | Consultor Philips | 8h | 8h |
| 136 | 1.3.10.3 | **Treinamento** | 1.5d | 2025-12-09 14:00 A | 2025-12-10 18:00 A |  | 100% | 2023-03-20 09:00 | 2023-03-20 18:00 | 1d |  |  | 12h | 12h |
| 137 | 1.3.10.3.1 | PEPO | 4h | 2025-12-09 14:00 A | 2025-12-09 18:00 A | 135 | 100% |  |  |  |  | Consultor Philips | 4h | 4h |
| 138 | 1.3.10.3.2 | Treinamento dos colaboradores | 8h | 2025-12-10 09:00 A | 2025-12-10 18:00 A | 137 | 100% | 2023-03-20 09:00 | 2023-03-20 18:00 | 1d |  | Consultor Philips | 8h | 8h |
| 139 | 1.3.10.4 | **Virada** | 2d | 2025-12-11 09:00 A | 2025-12-12 18:00 A |  | 100% | 2023-03-20 09:00 | 2023-03-20 18:00 | 1d |  |  | 16h | 16h |
| 140 | 1.3.10.4.1 | Processo de virada e acompanhamento | 16h | 2025-12-11 09:00 A | 2025-12-12 18:00 A | 138 | 100% | 2023-03-20 09:00 | 2023-03-20 18:00 | 1d |  | Consultor Philips | 16h | 16h |
| 141 | 1.4 | **Cronograma - Fase 4 - Ciclo da Receita** | 20d | 2026-01-05 09:00 A | 2026-01-30 18:00 A |  | 100% | 2023-03-20 09:00 | 2024-03-13 15:00 | 2061h |  |  | 160h | 160h |
| 142 | 1.4.1 | **Validação dos Perfis / Ajustes de Parametrição / Treinamento / Virada - Faturamento** | 5d | 2026-01-05 09:00 A | 2026-01-09 18:00 A |  | 100% | 2023-03-20 09:00 | 2023-03-20 18:00 | 1d |  |  | 40h | 40h |
| 143 | 1.4.1.1 | **Validação dos Perfis e Funções** | 0.5d | 2026-01-05 09:00 A | 2026-01-05 14:00 A |  | 100% | 2023-03-20 09:00 | 2023-03-20 18:00 | 1d |  |  | 4h | 4h |
| 144 | 1.4.1.1.1 | Validação e saneamento dos perfis utilizados no setor | 4h | 2026-01-05 09:00 A | 2026-01-05 14:00 A |  | 100% | 2023-03-20 09:00 | 2023-03-20 18:00 | 1d? | start no earlier than 2026-01-05 09:00 | Consultor Philips | 4h | 4h |
| 145 | 1.4.1.2 | **Ajustes de Parametriação** | 1d | 2026-01-05 14:00 A | 2026-01-06 14:00 A |  | 100% | 2023-03-20 09:00 | 2023-03-20 18:00 | 1d |  |  | 8h | 8h |
| 146 | 1.4.1.2.1 | Revisão dos parâmetros e regras | 8h | 2026-01-05 14:00 A | 2026-01-06 14:00 A | 144 | 100% | 2023-03-20 09:00 | 2023-03-20 18:00 | 8h? |  | Consultor Philips | 8h | 8h |
| 147 | 1.4.1.3 | **Treinamento** | 1.5d | 2026-01-06 14:00 A | 2026-01-07 18:00 A |  | 100% | 2023-03-20 09:00 | 2023-03-20 18:00 | 1d |  |  | 12h | 12h |
| 148 | 1.4.1.3.1 | Treinamento dos colaboradores | 4h | 2026-01-06 14:00 A | 2026-01-06 18:00 A | 146 | 100% | 2023-03-20 09:00 | 2023-03-20 18:00 | 1d |  | Consultor Philips | 4h | 4h |
| 149 | 1.4.1.3.2 | Repasse para terceiros | 4h | 2026-01-07 09:00 A | 2026-01-07 14:00 A | 148 | 100% |  |  |  |  | Consultor Philips | 4h | 4h |
| 150 | 1.4.1.3.3 | Regras e critérios de repasse | 4h | 2026-01-07 14:00 A | 2026-01-07 18:00 A | 149 | 100% |  |  |  |  | Consultor Philips | 4h | 4h |

| ID | WBS | Task | Duration | Start | Finish | Predecessors | Complete | Baseline start | Baseline finish | Baseline duration | Resources | Work | Actual work |
| --- | --- | --- | --- | --- | --- | --- | --- | --- | --- | --- | --- | --- | --- |
| 151 | 1.4.1.4 | **Virada** | 2d | 2026-01-08 09:00 A | 2026-01-09 18:00 A |  | 100% | 2023-03-20 09:00 | 2023-03-20 18:00 | 1d |  | 16h | 16h |
| 152 | 1.4.1.4.1 | Processo de virada e acompanhamento | 16h | 2026-01-08 09:00 A | 2026-01-09 18:00 A | 150 | 100% | 2023-03-20 09:00 | 2023-03-20 18:00 | 1d | Consultor Philips | 16h | 16h |
| 153 | 1.4.2 | **Validação dos Perfis / Ajustes de Parametrição / Treinamento / Virada - Financeiro** | 5d | 2026-01-12 09:00 A | 2026-01-16 18:00 A |  | 100% | 2023-03-20 09:00 | 2023-03-20 18:00 | 1d |  | 40h | 40h |
| 154 | 1.4.2.1 | **Validação dos Perfis e Funções** | 0.5d | 2026-01-12 09:00 A | 2026-01-12 14:00 A |  | 100% | 2023-03-20 09:00 | 2023-03-20 18:00 | 1d |  | 4h | 4h |
| 155 | 1.4.2.1.1 | Validação e saneamento dos perfis utilizados no setor | 4h | 2026-01-12 09:00 A | 2026-01-12 14:00 A | 152 | 100% | 2023-03-20 09:00 | 2023-03-20 18:00 | 1d? | Cliente | 4h | 4h |
| 156 | 1.4.2.2 | **Ajustes de Parametriação** | 1.5d | 2026-01-12 14:00 A | 2026-01-13 18:00 A |  | 100% | 2023-03-20 09:00 | 2023-03-20 18:00 | 1d |  | 12h | 12h |
| 157 | 1.4.2.2.1 | Revisão dos parâmetros e regras | 12h | 2026-01-12 14:00 A | 2026-01-13 18:00 A | 155 | 100% | 2023-03-20 09:00 | 2023-03-20 18:00 | 8h? | Cliente | 12h | 12h |
| 158 | 1.4.2.3 | **Treinamento** | 1d | 2026-01-14 09:00 A | 2026-01-14 18:00 A |  | 100% | 2023-03-20 09:00 | 2023-03-20 18:00 | 1d |  | 8h | 8h |
| 159 | 1.4.2.3.1 | Treinamento dos colaboradores | 8h | 2026-01-14 09:00 A | 2026-01-14 18:00 A | 157 | 100% | 2023-03-20 09:00 | 2023-03-20 18:00 | 1d | Cliente | 8h | 8h |
| 160 | 1.4.2.4 | **Virada** | 2d | 2026-01-15 09:00 A | 2026-01-16 18:00 A |  | 100% | 2023-03-20 09:00 | 2023-03-20 18:00 | 1d |  | 16h | 16h |
| 161 | 1.4.2.4.1 | Processo de virada e acompanhamento | 16h | 2026-01-15 09:00 A | 2026-01-16 18:00 A | 159 | 100% | 2023-03-20 09:00 | 2023-03-20 18:00 | 1d | Cliente | 16h | 16h |
| 162 | 1.4.3 | **Validação dos Perfis / Ajustes de Parametrição / Treinamento / Virada - Gerencial** | 5d | 2026-01-19 09:00 A | 2026-01-23 18:00 A |  | 100% | 2023-03-20 09:00 | 2023-03-20 18:00 | 1d |  | 40h | 40h |
| 163 | 1.4.3.1 | **Validação dos Perfis e Funções** | 0.5d | 2026-01-19 09:00 A | 2026-01-19 14:00 A |  | 100% | 2023-03-20 09:00 | 2023-03-20 18:00 | 1d |  | 4h | 4h |
| 164 | 1.4.3.1.1 | Validação e saneamento dos perfis utilizados no setor | 4h | 2026-01-19 09:00 A | 2026-01-19 14:00 A | 161 | 100% | 2023-03-20 09:00 | 2023-03-20 18:00 | 1d? | Cliente | 4h | 4h |
| 165 | 1.4.3.2 | **Ajustes de Parametriação** | 1.5d | 2026-01-19 14:00 A | 2026-01-20 18:00 A |  | 100% | 2023-03-20 09:00 | 2023-03-20 18:00 | 1d |  | 12h | 12h |
| 166 | 1.4.3.2.1 | Revisão dos parâmetros e regras | 12h | 2026-01-19 14:00 A | 2026-01-20 18:00 A | 164 | 100% | 2023-03-20 09:00 | 2023-03-20 18:00 | 8h? | Cliente | 12h | 12h |
| 167 | 1.4.3.3 | **Treinamento** | 1d | 2026-01-21 09:00 A | 2026-01-21 18:00 A |  | 100% | 2023-03-20 09:00 | 2023-03-20 18:00 | 1d |  | 8h | 8h |
| 168 | 1.4.3.3.1 | Treinamento dos colaboradores | 8h | 2026-01-21 09:00 A | 2026-01-21 18:00 A | 166 | 100% | 2023-03-20 09:00 | 2023-03-20 18:00 | 1d | Cliente | 8h | 8h |
| 169 | 1.4.3.4 | **Virada** | 2d | 2026-01-22 09:00 A | 2026-01-23 18:00 A |  | 100% | 2023-03-20 09:00 | 2023-03-20 18:00 | 1d |  | 16h | 16h |
| 170 | 1.4.3.4.1 | Processo de virada e acompanhamento | 16h | 2026-01-22 09:00 A | 2026-01-23 18:00 A | 168 | 100% | 2023-03-20 09:00 | 2023-03-20 18:00 | 1d | Cliente | 16h | 16h |
| 171 | 1.4.4 | **Validação dos Perfis / Ajustes de Parametrição / Treinamento / Virada - Qualidade** | 5d | 2026-01-26 09:00 A | 2026-01-30 18:00 A |  | 100% | 2023-03-20 09:00 | 2023-03-20 18:00 | 1d |  | 40h | 40h |
| 172 | 1.4.4.1 | **Validação dos Perfis e Funções** | 0.5d | 2026-01-26 09:00 A | 2026-01-26 14:00 A |  | 100% | 2023-03-20 09:00 | 2023-03-20 18:00 | 1d |  | 4h | 4h |
| 173 | 1.4.4.1.1 | Validação e saneamento dos perfis utilizados no setor | 4h | 2026-01-26 09:00 A | 2026-01-26 14:00 A | 170 | 100% | 2023-03-20 09:00 | 2023-03-20 18:00 | 1d? | Cliente | 4h | 4h |
| 174 | 1.4.4.2 | **Ajustes de Parametriação** | 1.5d | 2026-01-26 14:00 A | 2026-01-27 18:00 A |  | 100% | 2023-03-20 09:00 | 2023-03-20 18:00 | 1d |  | 12h | 12h |
| 175 | 1.4.4.2.1 | Revisão dos parâmetros e regras | 12h | 2026-01-26 14:00 A | 2026-01-27 18:00 A | 173 | 100% | 2023-03-20 09:00 | 2023-03-20 18:00 | 8h? | Cliente | 12h | 12h |

| ID | WBS | Task | Duration | Start | Finish | Predecessors | Complete | Baseline start | Baseline finish | Baseline duration | Resources | Work | Actual work |
| --- | --- | --- | --- | --- | --- | --- | --- | --- | --- | --- | --- | --- | --- |
| 176 | 1.4.4.3 | **Treinamento** | 1d | 2026-01-28 09:00 A | 2026-01-28 18:00 A |  | 100% | 2023-03-20 09:00 | 2023-03-20 18:00 | 1d |  | 8h | 8h |
| 177 | 1.4.4.3.1 | Treinamento dos colaboradores | 8h | 2026-01-28 09:00 A | 2026-01-28 18:00 A | 175 | 100% | 2023-03-20 09:00 | 2023-03-20 18:00 | 1d | Cliente | 8h | 8h |
| 178 | 1.4.4.4 | **Virada** | 2d | 2026-01-29 09:00 A | 2026-01-30 18:00 A |  | 100% | 2023-03-20 09:00 | 2023-03-20 18:00 | 1d |  | 16h | 16h |
| 179 | 1.4.4.4.1 | Processo de virada e acompanhamento | 16h | 2026-01-29 09:00 A | 2026-01-30 18:00 A | 177 | 100% | 2023-03-20 09:00 | 2023-03-20 18:00 | 1d | Cliente | 16h | 16h |
| 180 | 1.5 | **Cronograma - Fase 5 - Rollout Indaial** | 5d | 2026-02-02 09:00 A | 2026-02-06 18:00 A |  | 100% | 2023-03-20 09:00 | 2024-03-13 15:00 | 2061h |  | 40h | 40h |
| 181 | 1.5.1 | **Validação dos Perfis / Ajustes de Parametrição / Treinamento / Virada - Acompanhamento Rollout Indaial** | 5d | 2026-02-02 09:00 A | 2026-02-06 18:00 A |  | 100% | 2023-03-20 09:00 | 2023-03-20 18:00 | 1d |  | 40h | 40h |
| 182 | 1.5.1.1 | **Validação dos Perfis e Funções** | 0.5d | 2026-02-02 09:00 A | 2026-02-02 14:00 A |  | 100% | 2023-03-20 09:00 | 2023-03-20 18:00 | 1d |  | 4h | 4h |
| 183 | 1.5.1.1.1 | Validação e saneamento dos perfis utilizados no setor | 4h | 2026-02-02 09:00 A | 2026-02-02 14:00 A | 179 | 100% | 2023-03-20 09:00 | 2023-03-20 18:00 | 1d? | Consultor Philips | 4h | 4h |
| 184 | 1.5.1.2 | **Ajustes de Parametriação** | 1.5d | 2026-02-02 14:00 A | 2026-02-03 18:00 A |  | 100% | 2023-03-20 09:00 | 2023-03-20 18:00 | 1d |  | 12h | 12h |
| 185 | 1.5.1.2.1 | Revisão dos parâmetros e regras | 12h | 2026-02-02 14:00 A | 2026-02-03 18:00 A | 183 | 100% | 2023-03-20 09:00 | 2023-03-20 18:00 | 8h? | Consultor Philips | 12h | 12h |
| 186 | 1.5.1.3 | **Treinamento** | 1d | 2026-02-04 09:00 A | 2026-02-04 18:00 A |  | 100% | 2023-03-20 09:00 | 2023-03-20 18:00 | 1d |  | 8h | 8h |
| 187 | 1.5.1.3.1 | Treinamento dos colaboradores | 8h | 2026-02-04 09:00 A | 2026-02-04 18:00 A | 185 | 100% | 2023-03-20 09:00 | 2023-03-20 18:00 | 1d | Consultor Philips | 8h | 8h |
| 188 | 1.5.1.4 | **Virada** | 2d | 2026-02-05 09:00 A | 2026-02-06 18:00 A |  | 100% | 2023-03-20 09:00 | 2023-03-20 18:00 | 1d |  | 16h | 16h |
| 189 | 1.5.1.4.1 | Processo de virada e acompanhamento | 16h | 2026-02-05 09:00 A | 2026-02-06 18:00 A | 187 | 100% | 2023-03-20 09:00 | 2023-03-20 18:00 | 1d | Consultor Philips | 16h | 16h |
